# SOW5

How a schedule from MS Project changed from version to version. A marks actual dates.

## Version 1 (saved 2011-05-20)

Note of the change: VISTA-23 Updating Project plan

| ID | WBS | Task | Duration | Start | Finish | Predecessors | Complete | Total float | Constraint |
| --- | --- | --- | --- | --- | --- | --- | --- | --- | --- |
| 1 | 1 | **CRM UI** | 19.5d? | 2011-05-10 A | 2011-06-06 |  | 3% | 0d |  |
| 2 | 1.1 | **Business Domain** | 19.5d? | 2011-05-10 A | 2011-06-06 |  | 7% | 0d |  |
| 3 |  | Building | 4.5d? | 2011-05-10 A | 2011-05-16 |  | 30% | 0d |  |
| 4 |  | Roof | 1d? | 2011-05-16 | 2011-05-17 | 3 |  | 0d |  |
| 5 |  | Parking | 2d? | 2011-05-17 | 2011-05-19 | 4 |  | 0d | start no earlier than 2011-05-17 |
| 6 |  | Locker | 1d? | 2011-05-19 | 2011-05-20 | 5 |  | 0d |  |
| 7 |  | Pool | 1d? | 2011-05-20 | 2011-05-23 | 6 |  | 0d |  |
| 8 |  | Boiler | 1d? | 2011-05-23 | 2011-05-24 | 7 |  | 0d |  |
| 9 |  | Unit | 1d? | 2011-05-24 | 2011-05-25 | 8 |  | 0d |  |
| 10 |  | Tenant | 1d? | 2011-05-25 | 2011-05-26 | 9 |  | 0d |  |
| 11 |  | Inquary | 1d? | 2011-05-26 | 2011-05-27 | 10 |  | 0d |  |
| 12 |  | Application | 1d? | 2011-05-27 | 2011-05-30 | 11 |  | 0d |  |
| 13 |  | Lease | 1d? | 2011-05-30 | 2011-05-31 | 12 |  | 0d |  |
| 14 |  | Employee | 1d? | 2011-05-31 | 2011-06-01 | 13 |  | 0d |  |
| 15 |  | Vendor | 1d? | 2011-06-01 | 2011-06-02 | 14 |  | 0d |  |
| 16 |  | Contract | 2d | 2011-06-02 | 2011-06-06 | 15 |  | 0d |  |
| 17 | 1.2 | **Policies** | 1d? | 2011-05-10 | 2011-05-10 |  |  | 18.5d |  |
| 18 |  | Background Check Requirements | 1d? | 2011-05-10 | 2011-05-10 |  |  | 18.5d |  |
| 19 |  | Deposit Calculation Formula | 1d? | 2011-05-10 | 2011-05-10 |  |  | 18.5d |  |
| 20 |  | Legal/Collections | 1d? | 2011-05-10 | 2011-05-10 |  |  | 18.5d |  |
| 21 |  | Kids | 1d? | 2011-05-10 | 2011-05-10 |  |  | 18.5d |  |
| 22 |  | Fees | 1d? | 2011-05-10 | 2011-05-10 |  |  | 18.5d |  |
| 23 |  | Pets | 1d? | 2011-05-10 | 2011-05-10 |  |  | 18.5d |  |
| 24 | 1.3 | **Business Processes** | 1d? | 2011-05-10 | 2011-05-10 |  |  | 18.5d |  |
| 25 |  | Application Approval | 1d? | 2011-05-10 | 2011-05-10 |  |  | 18.5d |  |
| 26 |  | Move In | 1d? | 2011-05-10 | 2011-05-10 |  |  | 18.5d |  |
| 27 |  | Notice | 1d? | 2011-05-10 | 2011-05-10 |  |  | 18.5d |  |
| 28 |  | Move Out | 1d? | 2011-05-10 | 2011-05-10 |  |  | 18.5d |  |
| 29 |  | Off Market Statuses | 1d? | 2011-05-10 | 2011-05-10 |  |  | 18.5d |  |
| 30 |  | Elevator Booking | 1d? | 2011-05-10 | 2011-05-10 |  |  | 18.5d |  |
| 31 | 1.4 | **Profile** | 0d | 2011-05-10 | 2011-05-10 |  |  | 19.5d |  |
| 32 |  | Change Email, Password | 0d | 2011-05-10 | 2011-05-10 |  |  | 19.5d |  |
| 33 | 1.5 | **Preferences** | 0d | 2011-05-10 | 2011-05-10 |  |  | 19.5d |  |
| 34 |  | Notifications settings | 0d | 2011-05-10 | 2011-05-10 |  |  | 19.5d |  |
| 35 | 1.6 | **PM Settings** | 0d | 2011-05-10 | 2011-05-10 |  |  | 19.5d |  |
| 36 |  | Details | 0d | 2011-05-10 | 2011-05-10 |  |  | 19.5d |  |
| 37 |  | Default Policies | 0d | 2011-05-10 | 2011-05-10 |  |  | 19.5d |  |
| 38 | 1.7 | **Alerts/Notifications** | 1d? | 2011-05-10 | 2011-05-10 |  |  | 18.5d |  |
| 39 |  | Inquiry Alerts | 0d | 2011-05-10 | 2011-05-10 |  |  | 19.5d |  |
| 40 |  | Leas Application Alerts | 0d | 2011-05-10 | 2011-05-10 |  |  | 19.5d |  |
| 41 |  | Vacant Unit Alert | 1d? | 2011-05-10 | 2011-05-10 |  |  | 18.5d |  |
| 42 |  | Mails | 0d | 2011-05-10 | 2011-05-10 |  |  | 19.5d |  |
| 43 | 1.9 | **UI Framework Components and Functionality** | 1d? | 2011-05-10 | 2011-05-10 |  |  | 18.5d |  |
| 44 |  | Recent Activities | 0d | 2011-05-10 | 2011-05-10 |  |  | 19.5d |  |
| 45 |  | Favorites | 0d | 2011-05-10 | 2011-05-10 |  |  | 19.5d |  |
| 46 |  | Lister | 1d? | 2011-05-10 | 2011-05-10 |  |  | 18.5d |  |
| 47 |  | Text Search | 1d? | 2011-05-10 | 2011-05-10 |  |  | 18.5d |  |
| 48 | 1.10 | **Dashboard/Report** | 0d | 2011-05-10 | 2011-05-10 |  |  | 19.5d |  |
| 49 | 1.10.1 | **Gadgets** | 0d | 2011-05-10 | 2011-05-10 |  |  | 19.5d |  |
| 50 |  | Lister | 0d | 2011-05-10 | 2011-05-10 |  |  | 19.5d |  |
| 51 |  | Pie Chart | 0d | 2011-05-10 | 2011-05-10 |  |  | 19.5d |  |
| 52 |  | Bar Chart | 0d | 2011-05-10 | 2011-05-10 |  |  | 19.5d |  |
| 53 |  | Line Chart | 0d | 2011-05-10 | 2011-05-10 |  |  | 19.5d |  |
| 54 |  | Notifications Gadget | 0d | 2011-05-10 | 2011-05-10 |  |  | 19.5d |  |
| 55 |  | Alerts Gadget | 0d | 2011-05-10 | 2011-05-10 |  |  | 19.5d |  |
| 56 |  | Dashboard Management | 0d | 2011-05-10 | 2011-05-10 |  |  | 19.5d |  |
| 57 |  | Report Management | 0d | 2011-05-10 | 2011-05-10 |  |  | 19.5d |  |
| 58 | 1.11 | **CMS for Portal** | 1d? | 2011-05-10 | 2011-05-10 |  |  | 18.5d |  |
| 59 |  | General Site Properties | 1d? | 2011-05-10 | 2011-05-10 |  |  | 18.5d |  |
| 60 |  | Site Map Tree with Editing Capabilities | 1d? | 2011-05-10 | 2011-05-10 |  |  | 18.5d |  |
| 61 |  | Editor to define Static Pages | 1d? | 2011-05-10 | 2011-05-10 |  |  | 18.5d |  |
| 62 |  | Rich Text Editor component with image upload and filters | 1d? | 2011-05-10 | 2011-05-10 |  |  | 18.5d |  |
| 63 |  | Style/Skin Editor | 1d? | 2011-05-10 | 2011-05-10 |  |  | 18.5d |  |
| 64 | 2 | **PM Portal** | 16.5d? | 2011-05-10 | 2011-06-01 |  |  | 3d |  |
| 65 | 2.1 | **General Site Design** | 6.5d? | 2011-05-10 | 2011-05-18 |  |  | 3d |  |
| 66 |  | Site Map | 2.5d? | 2011-05-10 | 2011-05-12 |  |  | 3d |  |
| 67 |  | Styles | 1d? | 2011-05-12 | 2011-05-13 | 66 |  | 3d |  |
| 68 |  | Maps | 1d? | 2011-05-13 | 2011-05-16 | 67 |  | 3d |  |
| 69 |  | Picture Views | 1d? | 2011-05-16 | 2011-05-17 | 68 |  | 3d |  |
| 70 |  | Site Layout | 1d? | 2011-05-17 | 2011-05-18 | 69 |  | 3d |  |

| ID | WBS | Task | Duration | Start | Finish | Predecessors | Total float |
| --- | --- | --- | --- | --- | --- | --- | --- |
| 71 |  | Province Selection Map | 1d? | 2011-05-10 | 2011-05-10 |  | 18.5d |
| 72 | 2.2 | **Functionality** | 16.5d? | 2011-05-10 | 2011-06-01 |  | 3d |
| 73 |  | Apartment Lister | 1d | 2011-05-18 | 2011-05-19 | 70 | 3d |
| 74 |  | Apartment Details | 1d? | 2011-05-19 | 2011-05-20 | 73 | 3d |
| 75 |  | Unit Details | 1d? | 2011-05-20 | 2011-05-23 | 74 | 3d |
| 76 |  | Apply for lease | 1d? | 2011-05-23 | 2011-05-24 | 75 | 3d |
| 77 |  | Inquary | 1d? | 2011-05-24 | 2011-05-25 | 76 | 3d |
| 78 |  | Current application status, progress, actions | 1d? | 2011-05-10 | 2011-05-10 |  | 18.5d |
| 79 |  | Maintanance call | 1d? | 2011-05-25 | 2011-05-26 | 77 | 3d |
| 80 |  | Payments | 3d? | 2011-05-26 | 2011-05-31 | 79 | 3d |
| 81 |  | Static Content Presentation | 1d? | 2011-05-31 | 2011-06-01 | 80 | 3d |
| 82 | 3 | **PT Wizard** | 1d? | 2011-05-10 | 2011-05-10 |  | 18.5d |
| 83 |  | Mail Notifications and Invitations | 1d? | 2011-05-10 | 2011-05-10 |  | 18.5d |
| 84 |  | Co-Signer Flow | 0d | 2011-05-10 | 2011-05-10 |  | 19.5d |
| 85 |  | CRM Server | 1d? | 2011-05-10 | 2011-05-10 |  | 18.5d |

## Version 2 (data date 2011-05-20, saved 2011-05-21)

Note of the change: VISTA-23 Microsoft PP after meeting with Artur

Last finish 2011-06-06 → 2011-07-04 (+28d). Complete tasks 0 → 1.

Added:

| ID | Task | Duration | Start | Finish | Resources |
| --- | --- | --- | --- | --- | --- |
| 2 | **Business Domain (Lister, Search Criteria, Viewer, Editor)** | 32d? | 2011-05-20 | 2011-07-04 |  |
| 5 | RoofSegment | 2d? | 2011-06-01 | 2011-06-02 | VladL |
| 7 | Parking Spot | 2d? | 2011-06-07 | 2011-06-08 | VladL |
| 8 | Locker Area | 2d? | 2011-06-09 | 2011-06-10 | VladL |
| 14 | Inquiry | 2d? | 2011-06-23 | 2011-06-24 | VladL |
| 21 | Project Plan for Policies | 1d | 2011-05-20 | 2011-05-20 | ArturR |
| 22 | Policy Framework Design | 14d | 2011-05-23 | 2011-06-09 | ArturR |
| 23 | Policy related framework - navigate, list, search, duplicate, edit | 5d | 2011-05-20 | 2011-05-26 |  |
| 24 | **Lease Application** | 1d? | 2011-05-20 | 2011-05-20 |  |
| 25 | Document Req Before Background Check | 1d? | 2011-05-20 | 2011-05-20 |  |
| 26 | Document Req After Background Check | 1d? | 2011-05-20 | 2011-05-20 |  |
| 29 | Garantor Req | 1d? | 2011-05-20 | 2011-05-20 |  |
| 30 | <New Task> | 1d? | 2011-05-20 | 2011-05-20 |  |
| 31 | <New Task> | 1d? | 2011-05-20 | 2011-05-20 |  |
| 36 | Late Fees | 2d | 2011-06-24 | 2011-06-27 | ArturR |
| 38 | Prorate | 2d | 2011-06-30 | 2011-07-01 | ArturR |
| 46 | Parking/Storage Assignment | 3d | 2011-06-03 | 2011-06-07 | MichaelL; VladS |
| 48 | Inquiry Management | 2d | 2011-05-20 | 2011-05-23 |  |
| 49 | Lease Application Management | 2d | 2011-05-20 | 2011-05-23 |  |
| 50 | Vacant Unit Scoping | 2d | 2011-05-20 | 2011-05-23 |  |
| 57 | Policy Management | 1d | 2011-05-20 | 2011-05-20 |  |
| 58 | Alerts/Notifications | 2d | 2011-05-20 | 2011-05-23 |  |
| 63 | Lister Header - sorting, column selector | 1d | 2011-05-20 | 2011-05-20 |  |
| 64 | Search Filters | 1d | 2011-05-20 | 2011-05-20 |  |
| 94 | Apply for Lease | 1d | 2011-05-20 | 2011-05-20 |  |
| 97 | **Current application status, progress, approval process** | 1d? | 2011-05-20 | 2011-05-20 |  |
| 98 | Status page | 1d | 2011-05-20 | 2011-05-20 |  |
| 100 | Confirm PAP(Preauthorised Payment Plan) method | 2d? | 2011-05-20 | 2011-05-23 |  |
| 101 | Schedule move-in date | 2d? | 2011-05-20 | 2011-05-23 |  |
| 102 | Confirming Tenant Insurance and Hydro | 2d? | 2011-05-20 | 2011-05-23 |  |
| 103 | UPSELL page for PV to make profit through alliances | 2d? | 2011-05-20 | 2011-05-23 |  |
| 105 | **Payments** | 1d? | 2011-05-20 | 2011-05-20 |  |
| 106 | Payment method editor | 1d? | 2011-05-20 | 2011-05-20 |  |
| 107 | Payment history | 1d? | 2011-05-20 | 2011-05-20 |  |
| 108 | Current/Outstanding charges | 1d? | 2011-05-20 | 2011-05-20 |  |
| 114 | **Server** | 1d? | 2011-05-20 | 2011-05-20 |  |
| 115 | CRUD Functionality Services | 1d? | 2011-05-20 | 2011-05-20 |  |
| 116 | DNS selector for PM | 1d? | 2011-05-20 | 2011-05-20 |  |
| 117 | Eqifax | 1d? | 2011-05-20 | 2011-05-20 |  |
| 118 | Vista Corporate Site for PM Sign-up, Account configuration, Corporate-wise Policy Definition | 1d? | 2011-05-20 | 2011-05-20 |  |

Removed: 2 Business Domain; 22 Fees; 37 Default Policies; 38 Alerts/Notifications; 39 Inquiry Alerts; 40 Leas Application Alerts; 80 Payments

Changed:

| ID | Task | Start | Finish | Duration | Complete | Total float | Predecessors | Other |
| --- | --- | --- | --- | --- | --- | --- | --- | --- |
| 1 | **CRM UI** | 2011-05-10 A → 2011-05-20 A (+10d) | 2011-06-06 → 2011-07-04 (+28d) | 19.5d? → 32d? | 3% → 1% |  |  |  |
| 3 | Building | 2011-05-10 A → 2011-05-26 (+16d) | 2011-05-16 → 2011-05-27 (+11d) | 4.5d? → 2d? | 30% → 0% | 0d → 26d |  | resources none → VladL |
| 4 | Roof | 2011-05-16 → 2011-05-30 (+14d) | 2011-05-17 → 2011-05-31 (+14d) | 1d? → 2d? |  | 0d → 24d | 3 → none | resources none → VladL |
| 6 | Parking | 2011-05-17 → 2011-06-03 (+17d) | 2011-05-19 → 2011-06-06 (+18d) |  |  | 0d → 20d | 4 → none | constraint start no earlier than 2011-05-17 → none; resources none → VladL |
| 9 | Locker | 2011-05-19 → 2011-06-13 (+25d) | 2011-05-20 → 2011-06-14 (+25d) | 1d? → 2d? |  | 0d → 14d | 6 → none | resources none → VladL |
| 10 | Pool | 2011-05-20 → 2011-06-15 (+26d) | 2011-05-23 → 2011-06-16 (+24d) | 1d? → 2d? |  | 0d → 12d | 9 → none | resources none → VladL |
| 11 | Boiler | 2011-05-23 → 2011-05-20 (-3d) | 2011-05-24 → 2011-05-23 (-1d) | 1d? → 2d? |  | 0d → 30d | 10 → none | resources none → VladL |
| 12 | Unit | 2011-05-24 → 2011-06-17 (+24d) | 2011-05-25 → 2011-06-20 (+26d) | 1d? → 2d? |  | 0d → 10d | 11 → none | resources none → VladL |
| 13 | Tenant | 2011-05-25 → 2011-06-21 (+27d) | 2011-05-26 → 2011-06-22 (+27d) | 1d? → 2d? |  | 0d → 8d | 12 → none | resources none → VladL |
| 15 | Lease | 2011-05-30 → 2011-05-20 (-10d) | 2011-05-31 → 2011-05-23 (-8d) | 1d? → 2d? |  | 0d → -4d | 16 → none | resources none → VladL |
| 16 | Application | 2011-05-27 → 2011-05-24 (-3d) | 2011-05-30 → 2011-05-25 (-5d) | 1d? → 2d? |  | 0d → -4d | 95 → 15 | resources none → VladL |
| 17 | Employee | 2011-05-31 → 2011-06-27 (+27d) | 2011-06-01 → 2011-06-28 (+27d) | 1d? → 2d? |  | 0d → 4d | 15 → none | resources none → VladL |
| 18 | Vendor | 2011-06-01 → 2011-06-29 (+28d) | 2011-06-02 → 2011-06-30 (+28d) | 1d? → 2d? |  | 0d → 2d | 17 → none | resources none → VladL |
| 19 | Contract | 2011-06-02 → 2011-07-01 (+29d) | 2011-06-06 → 2011-07-04 (+28d) | 2d → 2d? |  |  | 18 → none | resources none → VladL |
| 20 | **Policies** | 2011-05-10 → 2011-05-20 (+10d) | 2011-05-10 → 2011-05-23 (+13d) | 1d? → 2d |  | 18.5d → none |  |  |
| 27 | Employment Req | 2011-05-24 → 2011-05-20 (-4d) | 2011-05-25 → 2011-05-20 (-5d) |  |  | 3d → 1d | 37 → none | was named Inquary; resources VadimS → none |
| 28 | Residency Req | 2011-05-10 → 2011-05-20 (+10d) | 2011-05-10 → 2011-05-20 (+10d) |  |  | 18.5d → 1d |  | was named Current application status, progress, actions; resources EliaK → none |
| 32 | Background Check Requirements | 2011-05-10 → 2011-06-14 (+35d) | 2011-05-10 → 2011-06-15 (+36d) | 1d? → 2d |  | 18.5d → -17d |  | resources none → ArturR |
| 33 | Deposit Calculation Formula | 2011-05-10 → 2011-06-16 (+37d) | 2011-05-10 → 2011-06-17 (+38d) | 1d? → 2d |  | 18.5d → -19d |  | resources none → ArturR |
| 34 | Legal/Collections | 2011-05-10 → 2011-06-20 (+41d) | 2011-05-10 → 2011-06-21 (+42d) | 1d? → 2d |  | 18.5d → -21d |  | resources none → ArturR |
| 35 | Kids | 2011-05-10 → 2011-06-22 (+43d) | 2011-05-10 → 2011-06-23 (+44d) | 1d? → 2d |  | 18.5d → -23d |  | resources none → ArturR |
| 37 | Usage Fees | 2011-05-23 → 2011-06-28 (+36d) | 2011-05-24 → 2011-06-29 (+36d) | 1d? → 2d |  | 3d → -27d | 93 → none | was named Apply for lease; resources VadimS → ArturR |
| 39 | Pets | 2011-05-10 → 2011-06-10 (+31d) | 2011-05-10 → 2011-06-13 (+34d) | 1d? → 2d |  | 18.5d → -15d |  | resources none → ArturR |
| 40 | **Business Processes** | 2011-05-10 → 2011-05-20 (+10d) | 2011-05-10 → 2011-05-23 (+13d) | 1d? → 2d |  | 18.5d → none |  |  |
| 41 | Application Approval | 2011-05-10 → 2011-05-26 (+16d) | 2011-05-10 → 2011-05-27 (+17d) | 1d? → 2d |  | 18.5d → -4d | none → 16 | resources none → VladS; MichaelL |
| 42 | Move In | 2011-05-10 → 2011-05-20 (+10d) | 2011-05-10 → 2011-05-24 (+14d) | 1d? → 3d |  | 18.5d → -1d |  | resources none → VladS; MichaelL |
| 43 | Notice | 2011-05-10 → 2011-05-24 (+14d) | 2011-05-10 → 2011-05-30 (+20d) | 1d? → 3d |  | 18.5d → -5d |  | resources none → VladS; MichaelL |
| 44 | Move Out | 2011-05-10 → 2011-05-30 (+20d) | 2011-05-10 → 2011-06-01 (+22d) | 1d? → 3d |  | 18.5d → -7d |  | resources none → VladS; MichaelL |
| 45 | Off Market Statuses | 2011-05-10 → 2011-06-01 (+22d) | 2011-05-10 → 2011-06-03 (+24d) | 1d? → 3d |  | 18.5d → -9d |  | resources none → VladS; MichaelL |
| 47 | Elevator Booking | 2011-05-10 → 2011-06-07 (+28d) | 2011-05-10 → 2011-06-09 (+30d) | 1d? → 3d |  | 18.5d → -13d |  | resources none → MichaelL; VladS |
| 51 | **Profile** | 2011-05-10 → 2011-05-20 (+10d) | 2011-05-10 → 2011-05-20 (+10d) | 0d → 1d |  | 19.5d → none |  |  |
| 52 | Change Email, Password | 2011-05-10 → 2011-05-20 (+10d) | 2011-05-10 → 2011-05-20 (+10d) | 0d → 1d |  | 19.5d → 0d |  |  |
| 53 | **Preferences** | 2011-05-10 → 2011-05-20 (+10d) | 2011-05-10 → 2011-05-20 (+10d) | 0d → 1d |  | 19.5d → none |  |  |
| 54 | Notifications settings | 2011-05-10 → 2011-05-20 (+10d) | 2011-05-10 → 2011-05-20 (+10d) | 0d → 1d |  | 19.5d → 0d |  |  |
| 55 | **PM Settings** | 2011-05-10 → 2011-05-20 (+10d) | 2011-05-10 → 2011-05-20 (+10d) | 0d → 1d |  | 19.5d → none |  |  |
| 56 | Details | 2011-05-10 → 2011-05-20 (+10d) | 2011-05-10 → 2011-05-20 (+10d) | 0d → 1d |  | 19.5d → 0d |  |  |
| 59 | Mails | 2011-05-10 → 2011-05-20 A (+10d) | 2011-05-10 → 2011-05-20 A (+10d) | 0d → 1d? | 0% → 100% | 19.5d → none |  |  |
| 60 | **UI Framework Components and Functionality** | 2011-05-10 → 2011-05-20 (+10d) | 2011-05-10 → 2011-05-20 (+10d) | 1d? → 1d |  | 18.5d → none |  |  |
| 61 | Recent Activities | 2011-05-10 → 2011-05-20 (+10d) | 2011-05-10 → 2011-05-20 (+10d) | 0d → 1d |  | 19.5d → 0d |  |  |
| 62 | Favorites | 2011-05-10 → 2011-05-20 (+10d) | 2011-05-10 → 2011-05-20 (+10d) | 0d → 1d |  | 19.5d → 0d |  |  |
| 65 | Text Search | 2011-05-10 → 2011-05-20 (+10d) | 2011-05-10 → 2011-05-20 (+10d) | 1d? → 1d |  | 18.5d → 0d |  |  |
| 66 | **Dashboard/Report** | 2011-05-10 → 2011-05-20 (+10d) | 2011-05-10 → 2011-05-23 (+13d) | 0d → 2d |  | 19.5d → none |  |  |
| 67 | **Gadgets** | 2011-05-10 → 2011-05-20 (+10d) | 2011-05-10 → 2011-05-20 (+10d) | 0d → 1d |  | 19.5d → none |  |  |
| 68 | Lister | 2011-05-10 → 2011-05-20 (+10d) | 2011-05-10 → 2011-05-20 (+10d) | 0d → 1d |  | 19.5d → 0d |  |  |
| 69 | Pie Chart | 2011-05-10 → 2011-05-20 (+10d) | 2011-05-10 → 2011-05-20 (+10d) | 0d → 1d |  | 19.5d → 0d |  |  |
| 70 | Bar Chart | 2011-05-10 → 2011-05-20 (+10d) | 2011-05-10 → 2011-05-20 (+10d) | 0d → 1d |  | 19.5d → 0d |  |  |
| 71 | Line Chart | 2011-05-10 → 2011-05-20 (+10d) | 2011-05-10 → 2011-05-20 (+10d) | 0d → 1d |  | 19.5d → 0d |  |  |
| 72 | Notifications Gadget | 2011-05-10 → 2011-05-20 (+10d) | 2011-05-10 → 2011-05-20 (+10d) | 0d → 1d |  | 19.5d → 0d |  |  |
| 73 | Alerts Gadget | 2011-05-10 → 2011-05-20 (+10d) | 2011-05-10 → 2011-05-20 (+10d) | 0d → 1d |  | 19.5d → 0d |  |  |
| 74 | Dashboard Management | 2011-05-10 → 2011-05-20 (+10d) | 2011-05-10 → 2011-05-20 (+10d) | 0d → 1d |  | 19.5d → 1d |  |  |
| 75 | Report Management | 2011-05-10 → 2011-05-20 (+10d) | 2011-05-10 → 2011-05-20 (+10d) | 0d → 1d |  | 19.5d → 1d |  |  |
| 76 | **CMS for Portal** | 2011-05-10 → 2011-05-20 (+10d) | 2011-05-10 → 2011-05-20 (+10d) | 1d? → 1d |  | 18.5d → none |  |  |
| 77 | General Site Properties | 2011-05-10 → 2011-05-20 (+10d) | 2011-05-10 → 2011-05-20 (+10d) | 1d? → 1d |  | 18.5d → 0d |  |  |
| 78 | Site Map Tree with Editing Capabilities | 2011-05-10 → 2011-05-20 (+10d) | 2011-05-10 → 2011-05-20 (+10d) | 1d? → 1d |  | 18.5d → 0d |  |  |
| 79 | Editor to define Static Pages | 2011-05-10 → 2011-05-20 (+10d) | 2011-05-10 → 2011-05-20 (+10d) | 1d? → 1d |  | 18.5d → 0d |  |  |
| 80 | Rich Text Editor component with image upload and filters | 2011-05-10 → 2011-05-20 (+10d) | 2011-05-10 → 2011-05-20 (+10d) | 1d? → 1d |  | 18.5d → 0d |  |  |
| 81 | Style/Skin Editor | 2011-05-10 → 2011-05-20 (+10d) | 2011-05-10 → 2011-05-20 (+10d) | 1d? → 1d |  | 18.5d → 0d |  |  |
| 82 | **Tenant Portal** | 2011-05-10 → 2011-05-20 (+10d) | 2011-06-01 → 2011-05-20 (-12d) | 16.5d? → 1d? |  | 3d → none |  | was named PM Portal |
| 83 | **General Site Design** | 2011-05-10 → 2011-05-20 (+10d) | 2011-05-18 → 2011-05-20 (+2d) | 6.5d? → 1d |  | 3d → none |  |  |
| 84 | Site Map | 2011-05-10 → 2011-05-20 (+10d) | 2011-05-12 → 2011-05-20 (+8d) | 2.5d? → 1d |  | 3d → 0d |  |  |
| 85 | Styles | 2011-05-12 → 2011-05-23 (+11d) | 2011-05-13 → 2011-05-23 (+10d) | 1d? → 1d |  | 3d → -1d | 84 → none |  |
| 86 | Maps | 2011-05-13 → 2011-05-24 (+11d) | 2011-05-16 → 2011-05-24 (+8d) | 1d? → 1d |  | 3d → -2d | 85 → none |  |
| 87 | Picture Views | 2011-05-16 → 2011-05-25 (+9d) | 2011-05-17 → 2011-05-25 (+8d) | 1d? → 1d |  | 3d → -3d | 86 → none |  |
| 88 | Site Layout | 2011-05-17 → 2011-05-26 (+9d) | 2011-05-18 → 2011-05-26 (+8d) | 1d? → 1d |  | 3d → -4d | 87 → none |  |
| 89 | Province Selection Map | 2011-05-10 → 2011-05-20 (+10d) | 2011-05-10 → 2011-05-20 (+10d) | 1d? → 1d |  | 18.5d → 0d |  |  |
| 90 | **Functionality** | 2011-05-10 → 2011-05-20 (+10d) | 2011-06-01 → 2011-05-20 (-12d) | 16.5d? → 1d? |  | 3d → none |  |  |
| 91 | Apartment Lister | 2011-05-18 → 2011-05-20 (+2d) | 2011-05-19 → 2011-05-20 (+1d) |  |  | 3d → 0d | 88 → none | resources VadimS → none |
| 92 | Apartment Details | 2011-05-19 → 2011-05-20 (+1d) |  | 1d? → 1d |  | 3d → 0d | 91 → none | resources VadimS → none |
| 93 | Unit Details |  | 2011-05-23 → 2011-05-20 (-3d) | 1d? → 1d |  | 3d → 0d | 92 → none | resources VadimS → none |
| 95 | Inquary | 2011-05-26 → 2011-05-20 (-6d) | 2011-05-27 → 2011-05-20 (-7d) | 1d? → 1d |  |  | 13 → none |  |

| ID | Task | Start | Finish | Duration | Total float | Predecessors | Other |
| --- | --- | --- | --- | --- | --- | --- | --- |
| 96 | Waiting List | 2011-05-10 → 2011-05-20 (+10d) | 2011-05-10 → 2011-05-20 (+10d) | 1d? → 1d | 18.5d → 0d |  | was named Lister |
| 99 | Show and sign the lease | 2011-05-10 → 2011-05-20 (+10d) | 2011-05-10 → 2011-05-23 (+13d) | 1d? → 2d? | 18.5d → -1d |  | was named CRM Server; resources VladS → none |
| 104 | Maintanance call | 2011-05-25 → 2011-05-20 (-5d) | 2011-05-26 → 2011-05-23 (-3d) | 1d? → 2d | 3d → -1d | 27 → none | resources EliaK → none |
| 109 | Static Content Presentation | 2011-05-31 → 2011-05-20 (-11d) | 2011-06-01 → 2011-05-20 (-12d) | 1d? → 1d | 3d → 0d | Payments → none | resources VadimS → none |
| 110 | **PT Wizard** | 2011-05-10 → 2011-05-20 (+10d) | 2011-05-10 → 2011-05-23 (+13d) | 1d? → 2d? | 18.5d → none |  |  |
| 111 | Mail Notifications and Invitations | 2011-05-10 → 2011-05-20 (+10d) | 2011-05-10 → 2011-05-20 (+10d) | 1d? → 1d | 18.5d → 1d |  | resources VladL → none |
| 112 | Co-Signer Flow | 2011-05-10 → 2011-05-20 (+10d) | 2011-05-10 → 2011-05-20 (+10d) | 0d → 1d | 19.5d → 1d |  | resources VladL → none |
| 113 | Support IE7 | 2011-05-10 → 2011-05-20 (+10d) | 2011-05-10 → 2011-05-20 (+10d) |  | 18.5d → 1d |  | was named Vacant Unit Alert |

## Version 3 (data date 2011-05-20, saved 2011-05-21)

Note of the change: VISTA-23 Microsoft PP after meeting with Artur

Last finish stays 2011-07-04.

Added:

| ID | Task | Duration | Start | Finish |
| --- | --- | --- | --- | --- |
| 109 | My Account | 1d? | 2011-05-20 | 2011-05-20 |
| 110 | Notice etc... | 1d? | 2011-05-20 | 2011-05-20 |

Changed:

| ID | Task | Other |
| --- | --- | --- |
| 59 | General Tenant Portal Properties | was named General Site Properties |

## Version 4 (data date 2011-05-20, saved 2011-05-22)

Note of the change: VISTA-23: added policies, concession entity

Last finish stays 2011-07-04.

Added:

| ID | Task | Duration | Start | Finish | Resources |
| --- | --- | --- | --- | --- | --- |
| 20 | Concession | 1d? | 2011-05-20 | 2011-05-20 | VladL |
| 27 | Proof documents | 1d? | 2011-05-20 | 2011-05-20 |  |
| 34 | Security Deposit Formula | 1d? | 2011-05-20 | 2011-05-20 |  |
| 41 | Pet Type and Number | 2d | 2011-05-20 | 2011-05-23 | ArturR |
| 42 | Docs To Be Given To Tenant | 2d | 2011-05-20 | 2011-05-23 | ArturR |
| 43 | Devices | 1d? | 2011-05-20 | 2011-05-20 | ArturR |
| 44 | Limit Number of Tenants | 1d? | 2011-05-20 | 2011-05-20 | ArturR |
| 45 | Accepted Payment Types | 1d? | 2011-05-20 | 2011-05-20 | ArturR |
| 46 | Application Fee | 1d? | 2011-05-20 | 2011-05-20 | ArturR |
| 47 | Lease Term Formula | 1d? | 2011-05-20 | 2011-05-20 | ArturR |
| 48 | Lease Termination Period | 1d? | 2011-05-20 | 2011-05-20 | ArturR |
| 49 | **Post-approval and Tenancy** | 1d? | 2011-05-20 | 2011-05-20 |  |
| 50 | Change Accepted Payment Types | 1d? | 2011-05-20 | 2011-05-20 | ArturR |
| 51 | Tenant insurance requirements | 1d? | 2011-05-20 | 2011-05-20 | ArturR |
| 52 | Hydro requirements | 1d? | 2011-05-20 | 2011-05-20 | ArturR |
| 53 | Pre-move In Inspection Requirement | 1d? | 2011-05-20 | 2011-05-20 |  |

Removed: 30 <New Task>; 31 <New Task>

Changed:

| ID | Task | Finish | Duration | Total float | Other |
| --- | --- | --- | --- | --- | --- |
| 25 | **Lease Application** | 2011-05-20 → 2011-07-01 (+42d) | 1d? → 31d? | 1d → -29d |  |
| 26 | Identification documents |  |  |  | was named Document Req Before Background Check; resources none → ArturR |
| 28 | Document Req After Submit |  |  |  | was named Document Req After Background Check; resources none → ArturR |
| 29 | Employment Req |  |  |  | resources none → ArturR |
| 30 | Residency Req |  |  |  | resources none → ArturR |
| 31 | Garantor Req |  |  |  | resources none → ArturR |
| 32 | Equifax Preapproval Requirements |  |  |  | was named Background Check Requirements |
| 40 | Pets Charge |  |  |  | was named Pets |
| 61 | Resource Booking |  |  |  | was named Elevator Booking |
| 109 | Inqiuary |  |  |  | was named Inquary |

## Version 5 (data date 2011-05-20, saved 2011-05-22)

Note of the change: VISTA-23: further updates with inscope/outofscope

Last finish stays 2011-07-04.

Added:

| ID | Task | Duration | Start | Finish |
| --- | --- | --- | --- | --- |
| 21 | **Administrative Domain** | 2d? | 2011-05-20 | 2011-05-23 |
| 22 | Role | 1d | 2011-05-20 | 2011-05-20 |
| 23 | User | 2d | 2011-05-20 | 2011-05-23 |
| 24 | Behaviour | 1d? | 2011-05-20 | 2011-05-20 |
| 76 | User Definition | 1d? | 2011-05-20 | 2011-05-20 |
| 77 | Role Definition | 1d? | 2011-05-20 | 2011-05-20 |
| 136 | Facility to describe uploaded document | 1d? | 2011-05-20 | 2011-05-20 |

Changed:

| ID | Task | Finish | Duration | Total float |
| --- | --- | --- | --- | --- |
| 1 | **CRM UI** | 2011-07-04 → 2011-07-01 (-3d) | 32d? → 31d? |  |
| 2 | **Business Domain (Lister, Search Criteria, Viewer, Editor)** | 2011-07-04 → 2011-06-24 (-10d) | 32d? → 26d |  |
| 3 | Building |  | 2d? → 2d |  |
| 6 | Parking |  | 2d? → 2d |  |
| 7 | Parking Spot |  | 2d? → 2d |  |
| 8 | Locker Area |  | 2d? → 2d |  |
| 9 | Locker |  | 2d? → 2d |  |
| 12 | Unit |  | 2d? → 2d | 10d → 9d |
| 13 | Tenant |  | 2d? → 2d |  |
| 14 | Inquiry |  | 2d? → 2d |  |
| 15 | Lease |  | 2d? → 2d |  |
| 16 | Application |  | 2d? → 2d |  |
| 20 | Concession | 2011-05-20 → 2011-05-23 (+3d) | 1d? → 2d | 31d → 29d |

## Version 6 (data date 2011-05-20, saved 2011-05-23)

Note of the change: VISTA-23 review with VS

Last finish 2011-07-04 → 2011-07-27 (+23d).

Added:

| ID | Task | Duration | Start | Finish | Resources |
| --- | --- | --- | --- | --- | --- |
| 1 | **VISTA** | 49d? | 2011-05-20 A | 2011-07-27 |  |
| 70 | Paymant Transaction Recording | 1d? | 2011-05-20 | 2011-05-20 | MichaelL; VladS |
| 133 | **API Layer** | 5d | 2011-05-20 | 2011-05-26 |  |
| 134 | REST Layer | 5d | 2011-05-20 | 2011-05-26 |  |
| 135 | www.birchwoodsoftwaregroup.com | 1d? | 2011-05-20 | 2011-05-20 |  |

Removed: 109 Province Selection Map

Changed:

| ID | Task | Start | Finish | Duration | Total float | Other |
| --- | --- | --- | --- | --- | --- | --- |
| 2 | **CRM** |  | 2011-07-01 → 2011-07-27 (+26d) | 31d? → 49d? |  | was named CRM UI |
| 3 | **Business Domain (Lister, Search Criteria, Viewer, Editor)** |  | 2011-06-24 → 2011-06-20 (-4d) | 26d → 22d | -4d → -26d |  |
| 5 | Roof | 2011-05-30 → 2011-05-20 (-10d) | 2011-05-31 → 2011-05-23 (-8d) |  | 23d → 47d |  |
| 6 | RoofSegment | 2011-06-01 → 2011-05-20 (-12d) | 2011-06-02 → 2011-05-23 (-10d) |  | 22d → 47d |  |
| 7 | Parking | 2011-06-03 → 2011-05-30 (-4d) | 2011-06-06 → 2011-05-31 (-6d) |  | 20d → 41d |  |
| 8 | Parking Spot | 2011-06-07 → 2011-06-01 (-6d) | 2011-06-08 → 2011-06-02 (-6d) |  | 18d → 39d |  |
| 9 | Locker Area | 2011-06-09 → 2011-06-03 (-6d) | 2011-06-10 → 2011-06-06 (-4d) |  | 16d → 37d |  |
| 10 | Locker | 2011-06-13 → 2011-06-07 (-6d) | 2011-06-14 → 2011-06-08 (-6d) |  | 14d → 35d |  |
| 11 | Pool | 2011-06-15 → 2011-05-20 (-26d) | 2011-06-16 → 2011-05-23 (-24d) |  | 11d → 47d |  |
| 14 | Tenant | 2011-06-21 → 2011-06-09 (-12d) | 2011-06-22 → 2011-06-10 (-12d) |  | 8d → 33d |  |
| 15 | Inquiry | 2011-06-23 → 2011-06-13 (-10d) | 2011-06-24 → 2011-06-14 (-10d) |  | 6d → 31d |  |
| 18 | Employee | 2011-06-27 → 2011-05-20 (-38d) | 2011-06-28 → 2011-05-23 (-36d) |  | 4d → 47d |  |
| 19 | Vendor | 2011-06-29 → 2011-05-20 (-40d) | 2011-06-30 → 2011-05-23 (-38d) |  | 2d → 47d |  |
| 20 | Contract | 2011-07-01 → 2011-05-20 (-42d) | 2011-07-04 → 2011-05-23 (-42d) |  | -1d → 47d |  |
| 21 | Concession | 2011-05-20 → 2011-06-15 (+26d) | 2011-05-23 → 2011-06-16 (+24d) |  |  |  |
| 30 | **Lease Application** | 2011-05-20 → 2011-06-10 (+21d) | 2011-07-01 → 2011-07-22 (+21d) |  | -29d → -30d |  |
| 31 | Identification documents | 2011-05-20 → 2011-07-08 (+49d) | 2011-05-20 → 2011-07-08 (+49d) |  | 1d → -34d |  |
| 32 | Proof documents | 2011-05-20 → 2011-06-10 (+21d) | 2011-05-20 → 2011-06-10 (+21d) |  |  |  |
| 33 | Document Req After Submit | 2011-05-20 → 2011-07-11 (+52d) | 2011-05-20 → 2011-07-11 (+52d) |  | 1d → -35d |  |
| 34 | Employment Req | 2011-05-20 → 2011-07-12 (+53d) | 2011-05-20 → 2011-07-12 (+53d) |  | 1d → -36d |  |
| 35 | Residency Req | 2011-05-20 → 2011-07-13 (+54d) | 2011-05-20 → 2011-07-13 (+54d) |  | 1d → -37d |  |
| 36 | Garantor Req | 2011-05-20 → 2011-07-14 (+55d) | 2011-05-20 → 2011-07-14 (+55d) |  | 1d → -38d |  |
| 39 | Security Deposit Formula | 2011-05-20 → 2011-06-10 (+21d) | 2011-05-20 → 2011-06-10 (+21d) |  |  |  |
| 46 | Pet Type and Number | 2011-05-20 → 2011-07-04 (+45d) | 2011-05-23 → 2011-07-05 (+43d) |  | 0d → -31d |  |
| 47 | Docs To Be Given To Tenant | 2011-05-20 → 2011-07-06 (+47d) | 2011-05-23 → 2011-07-07 (+45d) |  | 0d → -33d |  |
| 48 | Devices | 2011-05-20 → 2011-07-15 (+56d) | 2011-05-20 → 2011-07-15 (+56d) |  | 1d → -39d |  |
| 49 | Limit Number of Tenants | 2011-05-20 → 2011-07-18 (+59d) | 2011-05-20 → 2011-07-18 (+59d) |  | 1d → -40d |  |
| 50 | Accepted Payment Types | 2011-05-20 → 2011-07-19 (+60d) | 2011-05-20 → 2011-07-19 (+60d) |  | 1d → -41d |  |
| 51 | Application Fee | 2011-05-20 → 2011-07-20 (+61d) | 2011-05-20 → 2011-07-20 (+61d) |  | 1d → -42d |  |
| 52 | Lease Term Formula | 2011-05-20 → 2011-07-21 (+62d) | 2011-05-20 → 2011-07-21 (+62d) |  | 1d → -43d |  |
| 53 | Lease Termination Period | 2011-05-20 → 2011-07-22 (+63d) | 2011-05-20 → 2011-07-22 (+63d) |  | 1d → -44d |  |
| 54 | **Post-approval and Tenancy** |  | 2011-05-20 → 2011-07-27 (+68d) | 1d? → 49d? | 1d → -47d |  |
| 55 | Change Accepted Payment Types | 2011-05-20 → 2011-07-25 (+66d) | 2011-05-20 → 2011-07-25 (+66d) |  | 1d → -45d |  |
| 56 | Tenant insurance requirements | 2011-05-20 → 2011-07-26 (+67d) | 2011-05-20 → 2011-07-26 (+67d) |  | 1d → -46d |  |
| 57 | Hydro requirements | 2011-05-20 → 2011-07-27 (+68d) | 2011-05-20 → 2011-07-27 (+68d) |  | 1d → -47d |  |
| 60 | Application Approval | 2011-05-26 → 2011-06-16 (+21d) | 2011-05-27 → 2011-06-28 (+32d) | 2d → 4d | -4d → -26d |  |
| 61 | Move In | 2011-05-20 → 2011-05-31 (+11d) | 2011-05-24 → 2011-06-10 (+17d) | 3d → 4d | -1d → -14d |  |
| 62 | Notice | 2011-05-24 → 2011-06-02 (+9d) | 2011-05-30 → 2011-06-14 (+15d) | 3d → 4d | -5d → -16d |  |
| 63 | Move Out | 2011-05-30 → 2011-06-06 (+7d) | 2011-06-01 → 2011-06-16 (+15d) | 3d → 4d | -7d → -18d |  |
| 64 | Off Market Statuses | 2011-06-01 → 2011-06-08 (+7d) | 2011-06-03 → 2011-06-20 (+17d) | 3d → 4d | -9d → -20d |  |
| 65 | Parking/Storage Assignment | 2011-06-03 → 2011-06-10 (+7d) | 2011-06-07 → 2011-06-22 (+15d) | 3d → 4d | -11d → -22d |  |
| 66 | Resource Booking | 2011-06-07 → 2011-06-14 (+7d) | 2011-06-09 → 2011-06-24 (+15d) | 3d → 4d | -13d → -24d |  |
| 106 | Site Map | 2011-05-20 → 2011-05-30 (+10d) | 2011-05-20 → 2011-05-31 (+11d) | 1d → 2d | 0d → -7d |  |
| 107 | Styles | 2011-05-23 → 2011-05-20 (-3d) | 2011-05-23 → 2011-05-24 (+1d) | 1d → 3d | -1d → -2d |  |
| 108 | Maps | 2011-05-24 → 2011-06-03 (+10d) | 2011-05-24 → 2011-06-03 (+10d) |  | -2d → -10d |  |
| 109 | Picture Views |  | 2011-05-25 → 2011-05-27 (+2d) | 1d → 3d | -3d → -5d |  |
| 110 | Site Layout | 2011-05-26 → 2011-06-01 (+6d) | 2011-05-26 → 2011-06-02 (+7d) | 1d → 2d | -4d → -9d |  |
| 112 | Building(Complex) Lister |  |  |  |  | was named Apartment Lister |
| 113 | Building(Complex) Details |  |  |  |  | was named Apartment Details |
| 114 | Unit Type (Floorplan) Details |  |  |  |  | was named Unit Details |
| 117 | AVAILABILITY NOTIFICATION (Rerplaces Waiting List) |  |  |  |  | was named Waiting List |
| 127 | Payment method editor |  | 2011-05-20 → 2011-05-23 (+3d) | 1d? → 2d | 0d → -1d |  |
| 128 | Payment history |  | 2011-05-20 → 2011-05-23 (+3d) | 1d? → 2d | 0d → -1d |  |
| 129 | Current/Outstanding charges |  | 2011-05-20 → 2011-05-23 (+3d) | 1d? → 2d | 0d → -1d |  |
| 130 | My Account |  | 2011-05-20 → 2011-05-26 (+6d) | 1d? → 5d |  |  |
| 132 | Static Content Presentation |  | 2011-05-20 → 2011-05-24 (+4d) | 1d → 3d | 0d → -2d |  |
| 136 | **PT Application Wizard** |  | 2011-05-23 → 2011-07-19 (+57d) | 2d? → 43d | none → 0d | was named PT Wizard |
| 137 | Mail Notifications and Invitations | 2011-05-20 → 2011-07-12 (+53d) | 2011-05-20 → 2011-07-19 (+60d) | 1d → 6d | 1d → 6d | resources none → VladS |
| 138 | Co-Signer Flow | 2011-05-20 → 2011-07-01 (+42d) | 2011-05-20 → 2011-07-11 (+52d) | 1d → 7d | 1d → 12d | resources none → VladS |
| 139 | Support IE7 |  | 2011-05-20 → 2011-05-30 (+10d) | 1d? → 7d | 1d → 42d | resources none → MichaelL |
| 140 | Facility to describe uploaded document |  | 2011-05-20 → 2011-05-24 (+4d) | 1d? → 3d |  | resources none → VladL |
| 142 | CRUD Functionality Services |  | 2011-05-20 → 2011-05-30 (+10d) | 1d? → 7d | 0d → -6d | resources none → VladS |
| 143 | DNS selector for PM | 2011-05-20 → 2011-06-29 (+40d) | 2011-05-20 → 2011-06-30 (+41d) | 1d? → 2d | 0d → -29d | resources none → VladS |
| 144 | Eqifax | 2011-05-20 → 2011-05-31 (+11d) | 2011-05-20 → 2011-06-08 (+19d) | 1d? → 7d | 0d → -13d | resources none → VladS |

## Version 7 (data date 2011-05-20, saved 2011-05-23)

Note of the change: VISTA-23 Presentations for Lenny

Last finish stays 2011-07-27.

Added:

| ID | Task | Duration | Start | Finish |
| --- | --- | --- | --- | --- |
| 104 | Export to pdf, word etc | 15d | 2011-05-20 | 2011-06-09 |

Changed:

| ID | Task | Other |
| --- | --- | --- |
| 36 | Guarantor Req | was named Garantor Req |

## Version 8 (data date 2011-05-20, saved 2011-05-23)

Note of the change: VISTA-23: added a number of missing items, mostly external interfaces, payment gateway mode

Last finish stays 2011-07-27.

Added:

| ID | Task | Duration | Start | Finish |
| --- | --- | --- | --- | --- |
| 22 | **Print Out/Export** | 1d | 2011-05-20 | 2011-05-20 |
| 23 | Building | 1d | 2011-05-20 | 2011-05-20 |
| 24 | Unit | 1d | 2011-05-20 | 2011-05-20 |
| 25 | Tenant | 1d | 2011-05-20 | 2011-05-20 |
| 26 | Lease | 1d | 2011-05-20 | 2011-05-20 |
| 27 | Application | 1d | 2011-05-20 | 2011-05-20 |
| 94 | Settings for Yardi payment gateway | 1d | 2011-05-20 | 2011-05-20 |
| 126 | Reserve a unit | 3d | 2011-05-20 | 2011-05-24 |
| 154 | Yardi payment gateway | 14d | 2011-05-20 | 2011-06-08 |
| 155 | Managing marketing sources | 1d? | 2011-05-20 | 2011-05-20 |
| 156 | Export/Import data from/to Yardi | 1d? | 2011-05-20 | 2011-05-20 |
| 157 | Callfire | 1d? | 2011-05-20 | 2011-05-20 |
| 158 | Caledon interface | 1d? | 2011-05-20 | 2011-05-20 |

Changed:

| ID | Task | Start | Finish | Duration | Total float | Other |
| --- | --- | --- | --- | --- | --- | --- |
| 3 | **Business Domain (Lister, Search Criteria, Viewer, Editor, PDF Export)** |  |  |  | -26d → -28d | was named Business Domain (Lister, Search Criteria, Viewer, Editor) |
| 17 | Application |  | 2011-05-25 → 2011-05-27 (+2d) | 2d → 4d | -26d → -28d |  |
| 66 | Application Approval | 2011-06-16 → 2011-06-20 (+4d) | 2011-06-28 → 2011-06-30 (+2d) |  | -26d → -28d |  |
