# VistaGeneralProjectPlan

How a schedule from MS Project changed from version to version. A marks actual dates.

## Version 1 (data date 2011-05-20, saved 2011-06-16)

Note of the change: VISTA-23 General Project Plan

| ID | WBS | Task | Duration | Start | Finish | Predecessors | Complete | Total float |
| --- | --- | --- | --- | --- | --- | --- | --- | --- |
| 1 | 1 | **VISTA** | 67d? | 2011-05-20 A | 2011-08-22 |  |  | 0d |
| 2 | 1.1 | **UI** | 67d? | 2011-05-20 A | 2011-08-22 |  |  | 0d |
| 3 | 1.1.1 | **CRM** | 67d? | 2011-05-20 A | 2011-08-22 |  | 1% | 0d |
| 4 | 1.1.1.1 | **UI Framework Components and Functionality** | 1d | 2011-06-15 | 2011-06-15 |  |  | 48d |
| 5 |  | Lister Header - sorting, column selector | 1d | 2011-06-15 | 2011-06-15 |  |  | 48d |
| 6 |  | Search Filters | 1d | 2011-06-15 | 2011-06-15 |  |  | 48d |
| 7 |  | Global Search | 1d | 2011-06-15 | 2011-06-15 |  |  | 48d |
| 8 |  | Rich Text Editor component with image upload and filters | 1d | 2011-06-15 | 2011-06-15 |  |  | 48d |
| 9 | 1.1.1.2 | **Dashboard/Report** | 1d | 2011-06-15 | 2011-06-15 |  |  | 48d |
| 10 | 1.1.1.2.1 | **Gadgets** | 1d | 2011-06-15 | 2011-06-15 |  |  | 48d |
| 11 |  | Lister | 1d | 2011-06-15 | 2011-06-15 |  |  | 48d |
| 12 |  | Pie Chart | 1d | 2011-06-15 | 2011-06-15 |  |  | 48d |
| 13 |  | Bar Chart | 1d | 2011-06-15 | 2011-06-15 |  |  | 48d |
| 14 |  | Line Chart | 1d | 2011-06-15 | 2011-06-15 |  |  | 48d |
| 15 |  | Notifications Gadget | 1d | 2011-06-15 | 2011-06-15 |  |  | 48d |
| 16 |  | Alerts Gadget | 1d | 2011-06-15 | 2011-06-15 |  |  | 48d |
| 17 | 1.1.1.3 | **Print Out/PDF generation** | 1d | 2011-06-15 | 2011-06-15 |  |  | 48d |
| 18 |  | Building | 1d | 2011-06-15 | 2011-06-15 |  |  | 48d |
| 19 |  | Unit | 1d | 2011-06-15 | 2011-06-15 |  |  | 48d |
| 20 |  | Tenant | 1d | 2011-06-15 | 2011-06-15 |  |  | 48d |
| 21 |  | Lease | 1d | 2011-06-15 | 2011-06-15 |  |  | 48d |
| 22 |  | Application | 1d | 2011-06-15 | 2011-06-15 |  |  | 48d |
| 23 | 1.1.1.4 | **Business Domain (Lister, Search Criteria, Viewer, Editor)** | 25d? | 2011-06-15 | 2011-07-19 |  |  | 22d |
| 24 |  | Building | 2d | 2011-06-27 | 2011-06-28 |  |  | 39d |
| 25 |  | Parking | 2d | 2011-06-27 | 2011-06-28 |  |  | 39d |
| 26 |  | Parking Spot | 2d | 2011-06-29 | 2011-06-30 |  |  | 37d |
| 27 |  | Locker Area | 2d | 2011-07-04 | 2011-07-05 |  |  | 34d |
| 28 |  | Locker | 2d | 2011-07-05 | 2011-07-06 |  |  | 33d |
| 29 |  | Unit | 2d | 2011-07-18 | 2011-07-19 |  |  | 24d |
| 30 |  | Tenant | 2d | 2011-07-11 | 2011-07-12 |  |  | 29d |
| 31 |  | Lease | 2d | 2011-06-15 | 2011-06-16 |  |  | 22d |
| 32 |  | Application | 4d | 2011-06-17 | 2011-06-22 | 31 |  | 22d |
| 33 |  | Addendum | 2d? | 2011-07-18 | 2011-07-19 |  |  | 24d |
| 34 |  | Concession | 2d | 2011-07-18 | 2011-07-19 |  |  | 24d |
| 35 |  | Portfolio | 1d? | 2011-07-18 | 2011-07-18 |  |  | 25d |
| 36 |  | Compex | 1d? | 2011-07-18 | 2011-07-18 |  |  | 25d |
| 37 |  | Ownership Group | 1d? | 2011-07-18 | 2011-07-18 |  |  | 25d |
| 40 | 1.1.1.5 | **Business Processes** | 27d? | 2011-06-15 | 2011-07-21 |  |  | 22d |
| 41 |  | Application Approval | 4d | 2011-07-11 | 2011-07-21 | 32 |  | 22d |
| 42 |  | Move In | 4d | 2011-06-27 | 2011-07-07 |  |  | 32d |
| 43 |  | Notice | 4d | 2011-06-28 | 2011-07-08 |  |  | 31d |
| 44 |  | Move Out | 4d | 2011-07-04 | 2011-07-14 |  |  | 27d |
| 45 |  | Off Market Statuses | 4d | 2011-07-04 | 2011-07-14 |  |  | 27d |
| 46 |  | Parking/Storage Assignment | 4d | 2011-07-06 | 2011-07-18 |  |  | 25d |
| 47 |  | Resource Booking | 4d | 2011-07-11 | 2011-07-21 |  |  | 22d |
| 48 |  | Inquiry Management | 2d | 2011-06-15 | 2011-06-16 |  |  | 47d |
| 49 |  | Lease Application Management | 2d | 2011-06-15 | 2011-06-16 |  |  | 47d |
| 50 |  | Vacant Unit Scoping | 2d | 2011-06-15 | 2011-06-16 |  |  | 47d |
| 51 |  | Paymant Transaction Recording | 2d? | 2011-07-12 | 2011-07-21 |  |  | 22d |
| 52 | 1.1.1.6 | **PMC Admin Domain** | 2d? | 2011-06-15 | 2011-06-16 |  |  | 47d |
| 53 |  | Role | 1d | 2011-06-15 | 2011-06-15 |  |  | 48d |
| 54 |  | User | 2d | 2011-06-15 | 2011-06-16 |  |  | 47d |
| 55 |  | Behaviour | 1d? | 2011-06-15 | 2011-06-15 |  |  | 48d |
| 56 |  | Policy | 1d? | 2011-06-15 | 2011-06-15 |  |  | 48d |
| 57 |  | CMS Page Descriptor | 1d? | 2011-06-15 | 2011-06-15 |  |  | 48d |
| 58 | 1.1.1.7 | **PMC Administration Processes** | 49d? | 2011-06-15 | 2011-08-22 |  |  | 0d |
| 59 |  | Details | 1d | 2011-06-15 | 2011-06-15 |  |  | 48d |
| 60 |  | PMC Settings | 1d? | 2011-06-15 | 2011-06-15 |  |  | 48d |
| 61 |  | Yardi Import Settings | 1d? | 2011-06-15 | 2011-06-15 |  |  | 48d |
| 62 |  | User Definition | 1d? | 2011-06-15 | 2011-06-15 |  |  | 48d |
| 63 |  | Role Definition | 1d? | 2011-06-15 | 2011-06-15 |  |  | 48d |
| 64 | 1.1.1.7.6 | **CMS for Portal** | 1d | 2011-06-15 | 2011-06-15 |  |  | 48d |
| 65 |  | General Tenant Portal Properties | 1d | 2011-06-15 | 2011-06-15 |  |  | 48d |
| 66 | 1.1.1.7.7 | **Portal/CRM Branding** | 1d? | 2011-06-15 | 2011-06-15 |  |  | 48d |
| 67 |  | Style/Skin Editor | 1d | 2011-06-15 | 2011-06-15 |  |  | 48d |
| 68 |  | Page Descriptor and Site Map editing | 1d? | 2011-06-15 | 2011-06-15 |  |  | 48d |
| 69 | 1.1.1.7.8 | **Policy Management** | 49d? | 2011-06-15 | 2011-08-22 |  |  | 0d |
| 70 |  | Project Plan for Policies | 1d | 2011-06-15 | 2011-06-15 |  |  | 48d |
| 71 |  | Policy Framework Design | 14d | 2011-06-20 | 2011-07-07 |  |  | 32d |
| 72 |  | Policy related framework - navigate, list, search, duplicate, edit | 5d | 2011-06-15 | 2011-06-21 |  |  | 44d |

| ID | WBS | Task | Duration | Start | Finish | Complete | Total float |
| --- | --- | --- | --- | --- | --- | --- | --- |
| 73 | 1.1.1.7.8.4 | **Lease Application** | 44d? | 2011-06-15 | 2011-08-15 |  | 5d |
| 74 |  | Identification documents | 1d? | 2011-08-01 | 2011-08-01 |  | 15d |
| 75 |  | Proof documents | 1d? | 2011-06-15 | 2011-06-15 |  | 48d |
| 76 |  | Document Req After Submit | 1d? | 2011-08-02 | 2011-08-02 |  | 14d |
| 77 |  | Employment Req | 1d? | 2011-08-03 | 2011-08-03 |  | 13d |
| 78 |  | Residency Req | 1d? | 2011-08-08 | 2011-08-08 |  | 10d |
| 79 |  | Guarantor Req | 1d? | 2011-08-08 | 2011-08-08 |  | 10d |
| 80 |  | Equifax Preapproval Requirements | 2d | 2011-07-11 | 2011-07-12 |  | 29d |
| 81 |  | Deposit Calculation Formula | 2d | 2011-07-12 | 2011-07-13 |  | 28d |
| 82 |  | Security Deposit Formula | 1d? | 2011-06-15 | 2011-06-15 |  | 48d |
| 83 |  | Legal/Collections | 2d | 2011-07-18 | 2011-07-19 |  | 24d |
| 84 |  | Late Fees | 2d | 2011-07-18 | 2011-07-19 |  | 24d |
| 85 |  | Usage Fees | 2d | 2011-07-20 | 2011-07-21 |  | 22d |
| 86 |  | Prorate | 2d | 2011-07-25 | 2011-07-26 |  | 19d |
| 87 |  | Pets Charge | 2d | 2011-07-06 | 2011-07-07 |  | 32d |
| 88 |  | Pet Type and Number | 2d | 2011-07-26 | 2011-07-27 |  | 18d |
| 89 |  | Docs To Be Given To Tenant | 2d | 2011-08-01 | 2011-08-02 |  | 14d |
| 90 |  | Devices | 1d? | 2011-08-08 | 2011-08-08 |  | 10d |
| 91 |  | Accepted Payment Types | 1d? | 2011-08-09 | 2011-08-09 |  | 9d |
| 92 |  | Limit Number of Tenants | 1d? | 2011-08-10 | 2011-08-10 |  | 8d |
| 93 |  | Application Fee | 1d? | 2011-08-15 | 2011-08-15 |  | 5d |
| 94 |  | Lease Term Formula | 1d? | 2011-08-15 | 2011-08-15 |  | 5d |
| 95 |  | Lease Termination Period | 1d? | 2011-08-15 | 2011-08-15 |  | 5d |
| 96 | 1.1.1.7.8.5 | **Post-approval and Tenancy** | 49d? | 2011-06-15 | 2011-08-22 |  | 0d |
| 97 |  | Change Accepted Payment Types | 1d? | 2011-08-16 | 2011-08-16 |  | 4d |
| 98 |  | Tenant insurance requirements | 1d? | 2011-08-17 | 2011-08-17 |  | 3d |
| 99 |  | Hydro requirements | 1d? | 2011-08-22 | 2011-08-22 |  | 0d |
| 100 |  | Pre-move In Inspection Requirement | 1d? | 2011-06-15 | 2011-06-15 |  | 48d |
| 101 | 1.1.1.8 | **Profile** | 1d | 2011-06-15 | 2011-06-15 |  | 48d |
| 102 |  | Change Email, Password | 1d | 2011-06-15 | 2011-06-15 |  | 48d |
| 103 | 1.1.1.9 | **Preferences** | 1d | 2011-06-15 | 2011-06-15 |  | 48d |
| 104 |  | Notifications settings | 1d | 2011-06-15 | 2011-06-15 |  | 48d |
| 105 |  | Alerts/Notifications | 2d | 2011-06-15 | 2011-06-16 |  | 47d |
| 106 |  | Mails | 1d? | 2011-05-20 A | 2011-05-20 A | 100% |  |
| 107 |  | Settings for Yardi payment gateway | 1d | 2011-06-15 | 2011-06-15 |  | 48d |
| 108 | 1.1.2 | **Tenant Portal** | 11d? | 2011-06-15 | 2011-06-29 |  | 38d |
| 109 | 1.1.2.1 | **General Site Design** | 11d | 2011-06-15 | 2011-06-29 |  | 38d |
| 110 |  | Site Map | 2d | 2011-06-27 | 2011-06-28 |  | 39d |
| 111 |  | Styles | 3d | 2011-06-15 | 2011-06-17 |  | 46d |
| 112 |  | Maps | 1d | 2011-06-29 | 2011-06-29 |  | 38d |
| 113 |  | Picture Views | 3d | 2011-06-20 | 2011-06-22 |  | 43d |
| 114 |  | Site Layout | 2d | 2011-06-27 | 2011-06-28 |  | 39d |
| 115 | 1.1.2.2 | **Functionality** | 5d? | 2011-06-15 | 2011-06-21 |  | 44d |
| 116 |  | Login/HTTPS | 1d? | 2011-06-15 | 2011-06-15 |  | 48d |
| 117 |  | Building(Complex) Lister | 1d | 2011-06-15 | 2011-06-15 |  | 48d |
| 118 |  | Building(Complex) Details | 1d | 2011-06-15 | 2011-06-15 |  | 48d |
| 119 |  | Unit Type (Floorplan) Details | 1d | 2011-06-15 | 2011-06-15 |  | 48d |
| 120 |  | Apply for Lease | 1d | 2011-06-15 | 2011-06-15 |  | 48d |
| 121 |  | Inqiuary | 1d | 2011-06-15 | 2011-06-15 |  | 48d |
| 122 |  | AVAILABILITY NOTIFICATION (Replaces Waiting List) | 1d | 2011-06-15 | 2011-06-15 |  | 48d |
| 123 |  | Reserve a unit | 3d | 2011-06-15 | 2011-06-17 |  | 46d |
| 124 | 1.1.2.2.9 | **Current application status, progress, approval process** | 2d? | 2011-06-15 | 2011-06-16 |  | 47d |
| 125 |  | Status page | 1d | 2011-06-15 | 2011-06-15 |  | 48d |
| 126 |  | Show and sign the lease | 2d? | 2011-06-15 | 2011-06-16 |  | 47d |
| 127 |  | Confirm PAP(Preauthorised Payment Plan) method | 2d? | 2011-06-15 | 2011-06-16 |  | 47d |
| 128 |  | Schedule move-in date | 2d? | 2011-06-15 | 2011-06-16 |  | 47d |
| 129 |  | Confirming Tenant Insurance and Hydro | 2d? | 2011-06-15 | 2011-06-16 |  | 47d |
| 130 |  | UPSELL page for PV to make profit through alliances | 2d? | 2011-06-15 | 2011-06-16 |  | 47d |
| 131 | 1.1.2.2.10 | **Payments** | 2d? | 2011-06-15 | 2011-06-16 |  | 47d |
| 132 | 1.1.2.2.10.1 | **Setup Requiring Payment or Pay Now** | 2d? | 2011-06-15 | 2011-06-16 |  | 47d |
| 133 |  | Interact | 1d? | 2011-06-15 | 2011-06-15 |  | 48d |
| 134 |  | Bank | 1d? | 2011-06-15 | 2011-06-15 |  | 48d |
| 135 |  | Credit Card | 1d? | 2011-06-15 | 2011-06-15 |  | 48d |
| 136 |  | Current/Outstanding charges | 2d | 2011-06-15 | 2011-06-16 |  | 47d |
| 137 |  | Payment and Charge History | 1d? | 2011-06-15 | 2011-06-15 |  | 48d |
| 138 |  | Tenant Profile | 1d? | 2011-06-15 | 2011-06-15 |  | 48d |
| 139 |  | Lease App Status | 1d? | 2011-06-15 | 2011-06-15 |  | 48d |
| 140 |  | My Account | 5d | 2011-06-15 | 2011-06-21 |  | 44d |
| 141 |  | Static Content Presentation | 3d | 2011-06-15 | 2011-06-17 |  | 46d |
| 142 | 1.1.3 | **Lease Application Wizard** | 44d? | 2011-06-15 | 2011-08-15 |  | 5d |

| ID | WBS | Task | Duration | Start | Finish | Total float |
| --- | --- | --- | --- | --- | --- | --- |
| 143 |  | Mail Notifications and Invitations | 6d | 2011-08-08 | 2011-08-15 | 5d |
| 144 |  | Co-Signer Flow | 7d | 2011-06-15 | 2011-06-23 | 42d |
| 145 |  | Support IE7 | 7d | 2011-06-15 | 2011-06-23 | 42d |
| 146 |  | Images for Property | 1d? | 2011-06-15 | 2011-06-15 | 48d |
| 147 |  | Redo Document Upload | 1d? | 2011-06-15 | 2011-06-15 | 48d |
| 148 |  | Facility to describe uploaded document | 3d | 2011-07-11 | 2011-07-13 | 28d |
| 149 |  | Implement MOCK stuff | 1d? | 2011-06-15 | 2011-06-15 | 48d |
| 150 |  | Co-applicant flow | 1d? | 2011-06-15 | 2011-06-15 | 48d |
| 151 |  | Return to Status page on the End | 1d? | 2011-06-15 | 2011-06-15 | 48d |
| 152 |  | Corporate Admin | 1d? | 2011-06-15 | 2011-06-15 | 48d |
| 153 | 1.3 | **Server** | 45d? | 2011-06-15 | 2011-08-16 | 4d |
| 154 |  | CRUD Functionality Services | 7d | 2011-06-27 | 2011-07-05 | 34d |
| 155 |  | DNS selector for PM | 2d | 2011-08-15 | 2011-08-16 | 4d |
| 156 |  | Managing marketing sources | 1d? | 2011-06-15 | 2011-06-15 | 48d |
| 157 | 1.3.4 | **Billing** | 1d? | 2011-06-15 | 2011-06-15 | 48d |
| 158 |  | Domain | 1d? | 2011-06-15 | 2011-06-15 | 48d |
| 159 |  | Transactions | 1d? | 2011-06-15 | 2011-06-15 | 48d |
| 160 |  | Reconciliation | 1d? | 2011-06-15 | 2011-06-15 | 48d |
| 161 | 1.4 | **Interfaces** | 36d? | 2011-06-15 | 2011-08-03 | 13d |
| 162 |  | Eqifax | 7d | 2011-07-26 | 2011-08-03 | 13d |
| 163 |  | BMO | 1d? | 2011-06-15 | 2011-06-15 | 48d |
| 164 |  | Callfire | 1d? | 2011-06-15 | 2011-06-15 | 48d |
| 165 |  | Caledon interface | 1d? | 2011-06-15 | 2011-06-15 | 48d |
| 166 |  | Yardi payment gateway | 14d | 2011-06-15 | 2011-07-04 | 35d |
| 167 |  | Export/Import data from/to Yardi | 1d? | 2011-06-15 | 2011-06-15 | 48d |
| 168 |  | Dumb Pipe | 1d? | 2011-06-15 | 2011-06-15 | 48d |

## Version 2 (data date 2011-05-20, saved 2011-06-17)

Note of the change: VISTA-23 General Project Plan Update

Last finish stays 2011-08-22.

Added:

| ID | Task | Duration | Start | Finish |
| --- | --- | --- | --- | --- |
| 74 | **Reference Data and Settings** | 1d? | 2011-06-15 | 2011-06-15 |
| 75 | Currency | 1d? | 2011-06-15 | 2011-06-15 |
| 76 | Tenant document types | 1d? | 2011-06-15 | 2011-06-15 |

## Version 3 (data date 2011-05-20, saved 2011-06-17)

Note of the change: VISTA-404 occupancy state timeline

Last finish stays 2011-08-22.

Added:

| ID | Task | Duration | Start | Finish |
| --- | --- | --- | --- | --- |
| 38 | Employee | 1d? | 2011-07-18 | 2011-07-18 |
| 52 | PMC | 1d? | 2011-06-15 | 2011-06-15 |

## Version 4 (data date 2011-05-20, saved 2011-06-21)

Note of the change: VISTA-23 PP Update

Last finish stays 2011-08-22.

Added:

| ID | Task | Duration | Start | Finish | Resources |
| --- | --- | --- | --- | --- | --- |
| 3 | **General** | 6d? | 2011-06-15 | 2011-06-22 |  |
| 9 | Notes on Viewers (with attachment) | 6d | 2011-06-15 | 2011-06-22 |  |
| 11 | Dashboard/Report setting persistance | 3d | 2011-06-15 | 2011-06-17 | VladL |
| 12 | Dashboard/Report management screens | 4d | 2011-06-15 | 2011-06-20 | VladL |
| 20 | Document Upload | 4d | 2011-06-15 | 2011-06-20 |  |
| 21 | Alerts | 1d? | 2011-06-15 | 2011-06-15 |  |
| 22 | Notifications | 1d? | 2011-06-15 | 2011-06-15 |  |
| 23 | E-mail Integration | 1d? | 2011-06-15 | 2011-06-15 |  |

Changed:

| ID | Task | Finish | Duration | Total float | Other |
| --- | --- | --- | --- | --- | --- |
| 4 | **CRUD Components and Functionality** | 2011-06-15 → 2011-06-22 (+7d) | 1d → 6d | 48d → 43d | was named UI Framework Components and Functionality |
| 10 | **Dashboard/Report** | 2011-06-15 → 2011-06-20 (+5d) | 1d → 4d | 48d → 45d |  |

## Version 5 (data date 2011-05-20, saved 2011-06-22)

Note of the change: VISTA-23 PP Update

Last finish stays 2011-08-22.

Added:

| ID | Task | Duration | Start | Finish | Resources |
| --- | --- | --- | --- | --- | --- |
| 13 | Dashboard sharing | 1d | 2011-06-15 | 2011-06-15 | VladL |
| 14 | Global setting for Dashboard/Report | 2d | 2011-06-15 | 2011-06-16 |  |
| 61 | Building Dashboard/Report | 2d | 2011-06-15 | 2011-06-16 |  |
| 62 | **Dashboard/Report Gadgets** | 1d? | 2011-06-15 | 2011-06-15 |  |
| 63 | Arrears | 1d? | 2011-06-15 | 2011-06-15 |  |
| 64 | Budgets | 1d? | 2011-06-15 | 2011-06-15 |  |
| 65 | Purchase Orders | 1d? | 2011-06-15 | 2011-06-15 |  |
| 66 | Work Orders | 1d? | 2011-06-15 | 2011-06-15 |  |
| 67 | City Orders | 1d? | 2011-06-15 | 2011-06-15 |  |
| 68 | Leasing Pipeline (Move-ins, move outs, notices, renewals, etc) | 1d? | 2011-06-15 | 2011-06-15 |  |
| 69 | Collections (could go under arrears) | 1d? | 2011-06-15 | 2011-06-15 |  |
| 70 | Utilities (graphs and $ numbers) | 1d? | 2011-06-15 | 2011-06-15 |  |
| 192 | **Testing** | 1d? | 2011-06-15 | 2011-06-15 |  |
| 193 | Security Profiling | 1d? | 2011-06-15 | 2011-06-15 |  |
| 194 | Performance Profiling | 1d? | 2011-06-15 | 2011-06-15 |  |
| 195 | Integration Testing | 1d? | 2011-06-15 | 2011-06-15 |  |
| 196 | Test Automation | 1d? | 2011-06-15 | 2011-06-15 |  |
| 197 | Acceptance Testing | 1d? | 2011-06-15 | 2011-06-15 |  |

Changed:

| ID | Task | Duration | Other |
| --- | --- | --- | --- |
| 10 | **Dashboard/Report** | 4d → 4d? |  |
| 15 | **Gadgets** | 1d → 1d? |  |
| 20 | Notifications Gadget | 1d → 1d? |  |
| 21 | Alerts Gadget | 1d → 1d? |  |
| 191 | PayPad |  | was named Dumb Pipe |
